# Metasepi Project

Schedule from Planner, 2014-05-12 to 2015-01-15.

## Calendars

- デフォルト: Mon-Fri 08:00-12:00, 13:00-17:00; Sat-Sun off.

## Schedule

| ID | WBS | Task | Type | Duration | Start | Finish | Predecessors | Constraint | Work |
| --- | --- | --- | --- | --- | --- | --- | --- | --- | --- |
| 1 | 1 | **ATS demo on tiny CPU** |  |  | 2014-05-12 | 2014-05-26 |  |  | 88h |
| 2 | 1.1 | AVR support to ATS |  |  | 2014-05-12 | 2014-05-20 |  |  | 51h |
| 3 | 1.2 | ARM support to ATS |  |  | 2014-05-20 | 2014-05-26 | 2 |  | 37h |
| 4 | 2 | **Translate ATS doc** |  |  | 2014-05-12 | 2014-08-01 |  |  | 480h |
| 5 | 2.1 | ATS2TUTORIAL |  |  | 2014-05-12 | 2014-05-26 |  |  | 88h |
| 6 | 2.2 | INT2PROGINATS |  |  | 2014-05-27 | 2014-06-20 | 5 |  | 152h |
| 7 | 2.3 | Write coq2ats article |  |  | 2014-06-23 | 2014-08-01 | 6 |  | 240h |
| 8 | 3 | **ATS Ethernet driver** |  |  | 2014-05-27 | 2014-09-02 | 5 |  | 566.25h |
| 9 | 3.1 | Support W5100 |  |  | 2014-05-27 | 2014-06-17 |  |  | 126.25h |
| 10 | 3.2 | Support mbed |  |  | 2014-06-17 | 2014-07-01 | 9 |  | 80h |
| 11 | 3.3 | Rewrite uIP (or lwIP) |  |  | 2014-07-01 | 2014-08-05 | 10 |  | 200h |
| 12 | 3.4 | Support ENC28J60 |  |  | 2014-08-05 | 2014-09-02 | 11 |  | 160h |
| 13 | 4 | OSC@Nagoya | milestone | 0d | 2014-07-04 | 2014-07-04 | 9 | must start on 2014-07-04 |  |
| 14 | 5 | OSC@Kansai | milestone | 0d | 2014-08-01 | 2014-08-01 |  | must start on 2014-08-01 |  |
| 15 | 6 | Parsec on ATS |  |  | 2014-09-02 | 2014-09-30 | 8 |  | 160h |
| 16 | 7 | ATS OS X installer |  |  | 2014-09-30 | 2014-10-09 | 15 |  | 56h |
| 17 | 8 | ATS Windows installer |  |  | 2014-10-09 | 2014-11-06 | 16 |  | 160h |
| 18 | 9 | **Ready up Functional IoT** |  |  | 2014-11-06 | 2014-12-04 | 17 |  | 160h |
| 19 | 9.1 | gdbserver test |  |  | 2014-11-06 | 2014-11-17 |  |  | 56h |
| 20 | 9.2 | Write manual |  |  | 2014-11-17 | 2014-12-04 | 19 |  | 104h |
| 21 | 9.3 | Meetup at Nagoya | milestone | 0d | 2014-12-04 | 2014-12-04 | 20 |  |  |
| 22 | 10 | **ATS package manager** |  |  | 2014-12-04 | 2015-01-05 | 18 |  | 176h |
| 23 | 10.1 | Understand opam design |  |  | 2014-12-04 | 2014-12-25 |  |  | 120h |
| 24 | 10.2 | Get design for ATS |  |  | 2014-12-25 | 2015-01-05 | 23 |  | 56h |

| ID | WBS | Task | Start | Finish | Predecessors | Work |
| --- | --- | --- | --- | --- | --- | --- |
| 25 | 11 | **ATS snatches NetBSD** | 2014-12-04 | 2015-01-15 | 18 | 240h |
| 26 | 11.1 | Setup raspberrypi | 2014-12-04 | 2014-12-25 |  | 120h |
| 27 | 11.2 | Choose snatch target | 2014-12-25 | 2015-01-08 | 26 | 80h |
| 28 | 11.3 | Setup ATS config | 2015-01-08 | 2015-01-15 | 27 | 40h |
